# Pfizer Continuum Project Plan

Schedule from MS Project, 2012-12-03 to 2013-11-29, A marks actual dates.

## Calendars

- Standard: Mon-Fri 08:00-12:00, 13:00-17:00; Sat-Sun off.

## Resources

| Resource |
| --- |
| Bala |
| Smita |
| Nelli |
| Paula |
| Hugh |
| Steve Matyas |
| Todd |
| Steve L |
| Sohal |
| Harsha |
| Naveen |
| BDA Team |
| Systems Team |
| QA3 |
| QA4 |
| QA5 |
| Vrushali |
| Max |
| VCDE |
| Anu |
| rushali |
| CTEP |
| caXchange |
| C3PR |
| caAERS |
| PSC |
| LV |
| BDA |
| "C3PR |
| Documentation |
| caGrid |
| QA |
| BAM |
| Edmond |
| NCI |
| SAIC-F |
| Web Team |
| Bill Dyer |
| CCTS Team |
| John S |
| Patrick |
| Architects |
| Christo |
| John |
| Rhett |
| Nellie |
| Steve |
| Kalpesh |
| David L |
| Stevel L |
| Kumar C |
| Gia |
| Wendy |
| Raj |
| Steve M |
| Lauren |
| Systems |
| CTRO |
| Hannes |
| SMEs |
| Gisele |
| Joe |
| CTRP Dev team |
| CBIIT |
| All |
| Analysts |
| TBD |
| Charles |
| ESST |
| Developers |
| Lisa |
| Christophe |
| Krishna |
| QA1 |
| QA2 |
| David |
| Security |
| Arch |
| Tech Leads |
| Paula B |
| Kalpana |
| KK |
| Abe |
| Kim |
| Vijay |
| CAT |
| George |
| Larry |
| Michael O |
| Resource 1 |
| Resource 2 |
| Resource3 |
| Resource 4 |
| Resource 5 |
| Gisele S |
| Dianne R |
| HR |
| NA |
| SL |
| ScenPro |
| 5AM |
| TP |
| EM |
| KE |
| JM |
| DL |
| Paul |
| Michael |
| Eilis |
| Team |
| Dev team |
| Ram P |
| NIH 508 team |
| Bryan |
| Bill D |
| Marina |
| Ye |
| Rashmi |
| Ann Wiley |
| Winston |
| QA* |
| Systems* |
| Sree |

## Schedule

| ID | WBS | Task | Type | Duration | Start | Finish | Predecessors | Complete | Remaining | Total slack | Free slack | Constraint | Resources | Work | Actual work |
| --- | --- | --- | --- | --- | --- | --- | --- | --- | --- | --- | --- | --- | --- | --- | --- |
| 1 | 1 | **caArray** |  | 260d | 2012-12-03 A | 2013-11-29 |  | 9% | 235.77d | 0d |  | start no earlier than 2012-12-03 |  | 7424h | 680h |
| 2 | 1.1 | **caArray 2.5.1** |  | 121d | 2012-12-03 A | 2013-05-20 |  | 34% | 79.93d | 139d |  |  |  | 1664h | 680h |
| 3 | 1.1.1 | MILESTONE: PROJECT KICKOFF |  | 1d | 2012-12-06 A | 2012-12-06 A |  | 100% |  |  |  | start no earlier than 2012-12-06 |  |  |  |
| 4 | 1.1.2 | User Support - Rembrandt, etc. |  | 3d | 2012-12-03 A | 2012-12-05 A |  | 100% |  |  |  |  | Winston; Rashmi | 48h | 48h |
| 5 | 1.1.3 | Support Apache upgrade of all tiers |  | 5d | 2012-12-06 A | 2012-12-12 A | 4 | 100% |  |  |  |  | Rashmi | 40h | 40h |
| 6 | 1.1.4 | Review TRANSCEND UAT plan |  | 1d | 2012-12-13 A | 2012-12-13 A | 5 | 100% |  |  |  |  | Rashmi | 8h | 8h |
| 7 | 1.1.5 | Vacation and Team Member Unavailability |  | 10d | 2012-12-14 A | 2012-12-27 A | 6 | 100% |  |  |  |  | Winston; Rashmi | 160h | 160h |
| 8 | 1.1.6 | OSDI: Obtain GitHub accounts for all team members |  | 1d | 2012-12-28 A | 2012-12-28 A | 7 | 100% |  |  |  |  | Winston; Rashmi | 16h | 16h |
| 9 | 1.1.7 | OSDI: Do initial analysis, generate author list, fill out checklist |  | 3d | 2012-12-31 A | 2013-01-02 A | 8 | 100% |  |  |  |  | Winston; Rashmi | 48h | 48h |
| 10 | 1.1.8 | Rewrite PMP in EPLC format and update Project Plan |  | 2d | 2013-01-03 A | 2013-01-04 A | 9 | 100% |  |  |  |  | Rashmi | 16h | 16h |
| 11 | 1.1.9 | OSDI: Obtain access to NCIP channel in GitHub (Dependency) |  | 7d | 2012-12-31 A | 2013-01-08 A | 8 | 100% |  |  |  |  | Sree; Larry | 112h | 112h |
| 12 | 1.1.10 | OSDI: Generate a local git copy |  | 2d | 2013-01-03 A | 2013-01-04 A | 9 | 100% |  |  |  |  | Winston | 16h | 16h |
| 13 | 1.1.11 | OSDI: Split software and tools from docs and test data. |  | 3d | 2013-01-07 A | 2013-01-09 A | 12 | 100% |  |  |  |  | Winston | 24h | 24h |
| 14 | 1.1.12 | OSDI: Migrate local git copy to GitHub under NCIP |  | 4d | 2013-01-10 A | 2013-01-15 A | 11, 13 | 100% |  |  |  |  | Winston | 32h | 32h |
| 15 | 1.1.13 | OSDI: Change license/copyright text and merge into GitHub repo. |  | 2d | 2013-01-16 A | 2013-01-17 A | 14 | 100% |  |  |  |  | Winston | 16h | 16h |
| 16 | 1.1.14 | OSDI: Make build changes. (Remove svn dependencies, pull jboss from the tools directory, etc.) |  | 6d | 2013-01-18 A | 2013-01-25 A | 15 | 100% |  |  |  |  | Winston | 48h | 48h |
| 17 | 1.1.15 | OSDI: Update README and other documentation |  | 1d | 2013-02-04 A | 2013-02-04 A | 16 | 100% |  |  |  |  | Winston; Rashmi | 16h | 16h |
| 18 | 1.1.16 | Section 508 Compliance Improvements |  | 10d | 2013-02-05 A | 2013-02-18 | 17 | 50% | 5d | 3d | 0d |  | Winston; Rashmi | 160h | 80h |
| 19 | 1.1.17 | OSDI: Work with the Systems team to update and test the Dev AHP build. |  | 4d | 2013-02-19 | 2013-02-22 | 16, 18 |  |  | 3d | 0d |  | Winston; Systems | 64h |  |
| 20 | 1.1.18 | OSDI: Final test of AHP build on Dev tier |  | 1d | 2013-02-25 | 2013-02-25 | 19 |  |  | 3d | 0d |  | Winston; Systems; Rashmi | 24h |  |
| 21 | 1.1.19 | OSDI: Work with the Systems team to update and test AHP build on other tiers |  | 16d | 2013-02-26 | 2013-03-19 | 20 |  |  | 183d |  |  | Winston | 128h |  |
| 22 | 1.1.20 | Bug Fixes - performance |  | 10d | 2013-02-26 | 2013-03-11 | 20 |  |  | 3d | 0d |  | Winston | 80h |  |
| 23 | 1.1.21 | Automated Regression Testing on QA tier |  | 5d | 2013-03-12 | 2013-03-18 | 22 |  |  | 8d | 0d |  | QA* | 40h |  |
| 24 | 1.1.22 | Manual Regression Testing on QA tier |  | 4d | 2013-03-19 | 2013-03-22 | 23 |  |  | 8d | 0d |  | QA* | 32h |  |
| 25 | 1.1.23 | Installer Testing |  | 4d | 2013-03-25 | 2013-03-28 | 24 |  |  | 8d | 0d |  | QA* | 32h |  |
| 26 | 1.1.24 | QA reviews Section 508 compliance report |  | 2d | 2013-03-29 | 2013-04-01 | 25 |  |  | 8d | 5d |  | QA* | 16h |  |
| 27 | 1.1.25 | Appscan on QA tier |  | 20d | 2013-03-12 | 2013-04-08 | 22 |  |  | 3d | 0d |  | Systems* | 160h |  |
| 28 | 1.1.26 | Test Results Review and Reporting |  | 3d | 2013-04-09 | 2013-04-11 | 27, 23, 24, 25, 26 |  |  | 3d | 0d |  | QA* | 24h |  |
| 29 | 1.1.27 | Deploy to STAGE |  | 1d | 2013-04-12 | 2013-04-12 | 28 |  |  | 3d | 0d |  | Systems* | 8h |  |
| 30 | 1.1.28 | Appscan on STAGE tier |  | 20d | 2013-04-15 | 2013-05-10 | 29 |  |  | 139d | 0d |  | Systems* | 160h |  |
| 31 | 1.1.29 | Automated Regression Testing on STAGE |  | 4d | 2013-04-15 | 2013-04-18 | 29 |  |  | 153d | 0d |  | QA* | 32h |  |
| 32 | 1.1.30 | API Testing on STAGE |  | 2d | 2013-04-19 | 2013-04-22 | 31 |  |  | 153d | 14d |  | QA* | 16h |  |
| 33 | 1.1.31 | Test Results Review and Reporting |  | 3d | 2013-05-13 | 2013-05-15 | 31, 32, 30 |  |  | 139d | 0d |  | QA* | 24h |  |
| 34 | 1.1.32 | Create release artifacts |  | 1d | 2013-04-15 | 2013-04-15 | 29 |  |  | 164d |  |  | QA*; Winston; Rashmi | 24h |  |
| 35 | 1.1.33 | Deploy to PRODUCTION |  | 2d | 2013-05-16 | 2013-05-17 | 33 |  |  | 139d | 0d |  | Systems* | 16h |  |
| 36 | 1.1.34 | Update product landing page |  | 1d | 2013-05-20 | 2013-05-20 | 35 |  |  | 139d |  |  | Rashmi | 8h |  |
| 37 | 1.1.35 | QA smoke tests PRODUCTION |  | 1d | 2013-05-20 | 2013-05-20 | 35 |  |  | 139d | 0d |  | QA*; Rashmi | 16h |  |
| 38 | 1.1.36 | MILESTONE: RELEASE 2.5.1 | milestone | 0d | 2013-05-20 | 2013-05-20 | 37 |  |  | 139d |  | start no earlier than 2012-01-09 |  |  |  |

| ID | WBS | Task | Type | Duration | Start | Finish | Predecessors | Total slack | Free slack | Constraint | Resources | Work |
| --- | --- | --- | --- | --- | --- | --- | --- | --- | --- | --- | --- | --- |
| 39 | 1.2 | **caArray 2.5.2** |  | 162d | 2013-04-15 | 2013-11-26 |  | 3d |  |  |  | 1664h |
| 40 | 1.2.1 | CSM/UPT upgrade |  | 10d | 2013-04-15 | 2013-04-26 | 29 | 3d | 0d |  | Winston | 80h |
| 41 | 1.2.2 | FISMA POAM |  | 20d | 2013-04-29 | 2013-05-24 | 40 | 3d | 0d |  | Winston; Rashmi | 320h |
| 42 | 1.2.3 | Support Gforge Retirement |  | 5d | 2013-05-27 | 2013-05-31 | 41 | 3d | 0d |  | Winston; Rashmi | 80h |
| 43 | 1.2.4 | Bug Fixes - performance, etc. |  | 20d | 2013-06-03 | 2013-06-28 | 42 | 3d | 0d |  | Winston | 160h |
| 44 | 1.2.5 | Data Migration to File System |  | 30d | 2013-07-01 | 2013-08-09 | 43 | 3d | 0d |  | Winston | 240h |
| 45 | 1.2.6 | Any Improvements Requested |  | 20d | 2013-08-12 | 2013-09-06 | 44 | 3d | 0d |  | Winston | 160h |
| 46 | 1.2.7 | MILESTONE: EPLC REVIEW (as needed) |  | 2d | 2013-09-09 | 2013-09-10 | 45 | 3d | 0d | start no earlier than 2012-01-09 | Winston; Rashmi | 32h |
| 47 | 1.2.8 | Automated Regression Testing on QA tier |  | 5d | 2013-09-11 | 2013-09-17 | 46 | 3d | 0d |  | QA* | 40h |
| 48 | 1.2.9 | Manual Regression Testing on QA tier |  | 4d | 2013-09-18 | 2013-09-23 | 47 | 13d | 0d |  | QA* | 32h |
| 49 | 1.2.10 | Installer Testing |  | 4d | 2013-09-24 | 2013-09-27 | 48 | 13d | 0d |  | QA* | 32h |
| 50 | 1.2.11 | Section 508 testing on QA tier |  | 2d | 2013-09-30 | 2013-10-01 | 49 | 13d | 10d |  | QA* | 16h |
| 51 | 1.2.12 | Appscan on QA tier |  | 20d | 2013-09-18 | 2013-10-15 | 47 | 3d | 0d |  | Systems* | 160h |
| 52 | 1.2.13 | Test Results Review and Reporting |  | 3d | 2013-10-16 | 2013-10-18 | 51, 47, 48, 49, 50 | 3d | 0d |  | QA* | 24h |
| 53 | 1.2.14 | Deploy to STAGE |  | 1d | 2013-10-21 | 2013-10-21 | 52 | 3d | 0d |  | Systems* | 8h |
| 54 | 1.2.15 | Appscan on STAGE tier |  | 20d | 2013-10-22 | 2013-11-18 | 53 | 3d | 0d |  | Systems* | 160h |
| 55 | 1.2.16 | Automated Regression Testing on STAGE |  | 4d | 2013-10-22 | 2013-10-25 | 53 | 17d | 0d |  | QA* | 32h |
| 56 | 1.2.17 | API Testing on STAGE |  | 2d | 2013-10-28 | 2013-10-29 | 55 | 17d | 14d |  | QA* | 16h |
| 57 | 1.2.18 | Test Results Review and Reporting |  | 3d | 2013-11-19 | 2013-11-21 | 54, 55, 56 | 3d | 0d |  | QA* | 24h |
| 58 | 1.2.19 | Create release artifacts |  | 1d | 2013-10-22 | 2013-10-22 | 53 | 28d |  |  | Rashmi | 8h |
| 59 | 1.2.20 | Deploy to PRODUCTION |  | 2d | 2013-11-22 | 2013-11-25 | 57 | 3d | 0d |  | Systems* | 16h |
| 60 | 1.2.21 | Update product landing page |  | 1d | 2013-11-26 | 2013-11-26 | 59 | 3d |  |  | Rashmi; Systems* | 16h |
| 61 | 1.2.22 | QA smoke tests PRODUCTION |  | 1d | 2013-11-26 | 2013-11-26 | 59 | 3d | 0d |  | QA* | 8h |
| 62 | 1.2.23 | MILESTONE: RELEASE 2.5.2 | milestone | 0d | 2013-11-26 | 2013-11-26 | 61 | 3d |  | start no earlier than 2012-01-09 |  |  |
| 63 | 1.3 | User Support |  | 256d | 2012-12-07 | 2013-11-29 | 3 | 0d |  |  | Winston; Rashmi | 4096h |
| 66 | 1.4 | *QA and Systems are EXTERNAL resources/dependencies | milestone | 0d | 2012-12-03 | 2012-12-03 |  | 260d |  |  |  |  |
