# caArray

Schedule from MS Project, 2007-04-02 to 2008-01-03, A marks actual dates.
Project Schedule
5AM Solutions

## Calendars

- Standard: Mon-Fri 08:00-12:00, 13:00-17:00; Sat-Sun off.

## Resources

| Resource |
| --- |
| etavela |
| smatyas |
| bgendleman |
| rdaly |
| jpike |
| rsrinavasa |
| smiller |
| pduvall |
| aglover |
| bmason |
| tparnell |
| lpower |
| rsrinivasa |
| mrehfuss |

## Schedule

| ID | WBS | Task | Duration | Start | Finish | Predecessors | Complete | Remaining | Baseline start | Baseline finish | Baseline duration | Total slack | Free slack | Constraint | Deadline | Resources | Work | Actual work |
| --- | --- | --- | --- | --- | --- | --- | --- | --- | --- | --- | --- | --- | --- | --- | --- | --- | --- | --- |
| 1 | 1 | **caArray 2.0** | 199d? | 2007-04-02 A | 2008-01-03 |  | 29% | 140.5d? | 2007-04-02 | 2007-05-21 | 35.75d? | -86d | 0d |  | 2007-07-27 |  | 7615.79h | 4086.79h |
| 2 | 1.1 | **Inception Phase** | 33d | 2007-04-02 A | 2007-05-16 A |  | 100% |  | 2007-04-02 | 2007-05-15 | 32d |  |  |  |  |  | 749.28h | 749.28h |
| 3 | 1.1.1 | **Inception Iteration 1** | 33d | 2007-04-02 A | 2007-05-16 A |  | 100% |  | 2007-04-02 | 2007-05-15 | 32d |  |  |  |  |  | 749.28h | 749.28h |
| 4 | 1 | **Project Management** | 31.25d | 2007-04-02 A | 2007-05-15 A |  | 100% |  | 2007-04-02 | 2007-05-15 | 31.25d |  |  |  |  |  | 20h | 20h |
| 5 | 1.1.1.1.1 | Plan the project | 12d | 2007-04-02 A | 2007-04-19 A |  | 100% |  | 2007-04-02 | 2007-04-19 | 12d |  |  | start no earlier than 2007-04-02 |  | rdaly [5%]; bgendleman | 20h | 20h |
| 6 | 1.4 | Plan Remainder of Initial Iteration | 1d | 2007-04-19 A | 2007-04-19 A |  | 100% |  | 2007-04-19 | 2007-04-19 | 1d |  |  | start no earlier than 2007-04-19 |  |  |  |  |
| 7 | 1.8 | Plan for Next Iteration | 5d | 2007-05-07 A | 2007-05-11 A |  | 100% |  | 2007-05-07 | 2007-05-11 | 5d |  |  |  |  |  |  |  |
| 8 | 1.1.1.1.4 | **Finalize Deliverables** | 31.25d | 2007-04-02 A | 2007-05-15 A |  | 100% |  | 2007-04-02 | 2007-05-15 | 31.25d |  |  |  |  |  |  |  |
| 9 | 1.1.1.1.4.1 | March Status Report | 2h | 2007-04-16 A | 2007-04-16 A |  | 100% |  | 2007-04-16 | 2007-04-16 | 2h |  |  | start no earlier than 2007-04-16 | 2007-04-18 |  |  |  |
| 10 | 1.1.1.1.4.2 | April Status Report | 2h | 2007-05-15 A | 2007-05-15 A |  | 100% |  | 2007-05-15 | 2007-05-15 | 2h |  |  | start no earlier than 2007-05-15 | 2007-05-15 |  |  |  |
| 11 | 1.1.1.1.4.3 | Release Risk List | 2h | 2007-04-02 A | 2007-04-02 A |  | 100% |  | 2007-04-02 | 2007-04-02 | 2h |  |  |  | 2007-05-15 |  |  |  |
| 12 | 3 | **Requirements** | 30.5d | 2007-04-02 A | 2007-05-14 A |  | 100% |  | 2007-04-02 | 2007-05-14 | 30.35d |  |  |  |  |  | 160.6h | 160.6h |
| 13 | 3.1 | Define the Preliminary Vision | 5d | 2007-04-23 A | 2007-05-04 A | 5SS, 14FF | 100% |  | 2007-04-23 | 2007-05-04 | 5d |  |  | start no earlier than 1999-05-04 |  |  |  |  |
| 14 | 3.2 | **Elicit Stakeholder Needs** | 22.4d | 2007-04-04 A | 2007-05-04 A | 5SS | 100% |  | 2007-04-04 | 2007-05-04 | 22.75d |  |  |  |  |  | 45h | 45h |
| 15 | 1.1.1.2.2.1 | Live Meeting with NCICB Stakeholders | 4.38d | 2007-04-04 A | 2007-04-12 A |  | 100% |  | 2007-04-04 | 2007-04-11 | 4.38d |  |  | start no earlier than 2007-04-04 |  | bgendleman; rdaly; etavela [25%] | 30h | 30h |
| 16 | 1.1.1.2.2.2 | Teleconference with Columbia - Aris | 1h | 2007-04-09 A | 2007-04-09 A | 15 | 100% |  | 2007-04-09 | 2007-04-09 | 1h |  |  |  |  | bgendleman | 1h | 1h |
| 17 | 1.1.1.2.2.3 | Teleconference with Northwestern | 2h | 2007-04-20 A | 2007-04-20 A |  | 100% |  | 2007-04-20 | 2007-04-20 | 2h |  |  | start no earlier than 2007-04-20 |  | bgendleman | 2h | 2h |
| 18 | 1.1.1.2.2.4 | Live Meeting with Georgetown | 4h | 2007-04-23 A | 2007-04-23 A | 17 | 100% |  | 2007-04-27 | 2007-04-27 | 4h |  |  | start no earlier than 2007-04-23 |  | bgendleman | 4h | 4h |
| 19 | 1.1.1.2.2.5 | Live Meeting with Thomas Jefferson | 4h | 2007-04-27 A | 2007-04-27 A | 18 | 100% |  | 2007-04-27 | 2007-05-04 | 4h |  |  | start no earlier than 2007-04-26 |  | bgendleman | 4h | 4h |
| 20 | 1.1.1.2.2.6 | Live Meeting with U Pitt | 4h | 2007-05-03 A | 2007-05-04 A | 19 | 100% |  | 2007-05-04 | 2007-05-04 | 4h |  |  | start no earlier than 2007-04-30 |  | bgendleman | 4h | 4h |
| 21 | 3.3 | Identify and Describe Use Cases | 4d | 2007-04-18 A | 2007-04-23 A |  | 100% |  | 2007-04-18 | 2007-04-23 | 4d |  |  | finish no earlier than 2007-04-20 |  | bgendleman; rdaly | 56h | 56h |
| 22 | 3.5 | Refine the System Definition | 6.35d | 2007-04-24 A | 2007-05-04 A | 6, 21 | 100% |  | 2007-04-24 | 2007-05-10 | 6.25d |  |  | start no earlier than 2007-04-18 |  | bgendleman; etavela [10%] | 20h | 20h |
| 23 | 1.1.1.2.5 | **Implement Requirement and Test Traceability** | 3.25d | 2007-04-16 A | 2007-04-19 A |  | 100% |  | 2007-04-16 | 2007-04-20 | 4.6d |  |  |  |  |  | 3.6h | 3.6h |
| 24 | 1.1.1.2.5.1 | Determine Approach | 2.25d | 2007-04-16 A | 2007-04-19 A |  | 100% |  | 2007-04-16 | 2007-04-20 | 2.25d |  |  | start no earlier than 2007-04-16 |  | bgendleman [20%]; etavela [20%] | 3.6h | 3.6h |
| 25 | 3.6 | Manage Changing Requirements | 1d | 2007-04-27 A | 2007-05-04 A | 13SS | 100% |  | 2007-04-27 | 2007-05-04 | 1d |  |  | start no earlier than 2007-04-25 |  | bgendleman | 8h | 8h |

Notes:
- 15: expect follow up with Suba, Mervi and Xiaopeng as requirements contributors

| ID | WBS | Task | Type | Duration | Start | Finish | Predecessors | Complete | Baseline start | Baseline finish | Baseline duration | Constraint | Deadline | Resources | Work | Actual work |
| --- | --- | --- | --- | --- | --- | --- | --- | --- | --- | --- | --- | --- | --- | --- | --- | --- |
| 26 | 1.1.1.2.7 | **Finalize Deliverables** |  | 30.5d | 2007-04-02 A | 2007-05-14 A |  | 100% | 2007-04-02 | 2007-05-14 | 30.35d |  |  |  | 28h | 28h |
| 27 | 1.1.1.2.7.1 | Requirements Management Plan |  | 0.25d | 2007-04-02 A | 2007-04-09 A |  | 100% | 2007-04-02 | 2007-04-09 | 0.25d |  |  | bgendleman | 2h | 2h |
| 28 | 1.1.1.2.7.2 | Finalize Questionnaire |  | 0.25d | 2007-04-02 A | 2007-04-02 A |  | 100% | 2007-04-02 | 2007-04-02 | 0.25d |  |  | bgendleman | 2h | 2h |
| 29 | 1.1.1.2.7.3 | Draft Vision Document |  | 1d | 2007-04-30 A | 2007-05-11 A | 20, 13 | 100% | 2007-04-30 | 2007-05-11 | 1d |  |  | bgendleman | 8h | 8h |
| 30 | 1.1.1.2.7.4 | Draft Supplementary Spec |  | 1d | 2007-05-11 A | 2007-05-14 A | 29 | 100% | 2007-05-11 | 2007-05-14 | 1d |  |  | bgendleman | 8h | 8h |
| 31 | 1.1.1.2.7.5 | Draft Use Case Model |  | 1d | 2007-04-27 A | 2007-05-03 A | 21 | 100% | 2007-04-27 | 2007-05-04 | 1d |  | 2007-05-04 | bgendleman | 8h | 8h |
| 32 | 4 | **Analysis and Design** |  | 33d | 2007-04-02 A | 2007-05-16 A |  | 100% | 2007-04-02 | 2007-04-20 | 15d |  |  |  | 111.68h | 111.68h |
| 33 | 4.1 | Use Case Analysis (Manage Protocols) |  | 1d | 2007-04-05 A | 2007-04-05 A |  | 100% | 2007-04-05 | 2007-04-05 | 1d | start no earlier than 2007-04-05 |  | etavela | 8h | 8h |
| 34 | 1.1.1.3.2 | Use Case Design (Manage Protocols) |  | 1d | 2007-04-06 A | 2007-04-06 A | 33 | 100% | 2007-04-06 | 2007-04-06 | 1d |  |  | etavela | 8h | 8h |
| 35 | 1.1.1.3.3 | Vocabulary Management Subsystem Design |  | 4.95d | 2007-04-04 A | 2007-04-12 A |  | 100% | 2007-04-04 | 2007-04-12 | 4.95d | start no earlier than 2007-04-04 |  | etavela [10%]; jpike | 26.08h | 26.08h |
| 36 | 1.1.1.3.4 | Data Access Subsystem Design |  | 2.75d | 2007-04-09 A | 2007-04-13 A |  | 100% | 2007-04-09 | 2007-04-20 | 3d | start no earlier than 2007-04-09 | 2007-04-20 | rsrinavasa; etavela [25%] | 18h | 18h |
| 37 | 1.1.1.3.5 | MAGE-OM Façade |  | 4.5d | 2007-04-02 A | 2007-04-10 A |  | 100% | 2007-04-02 | 2007-04-10 | 4.5d |  |  | rsrinavasa; etavela [25%] | 30h | 30h |
| 38 | 1.1.1.3.6 | **Finalize Deliverables** |  | 3d | 2007-05-14 A | 2007-05-16 A |  | 100% | 2007-04-11 | 2007-04-19 | 6d |  |  |  | 21.6h | 21.6h |
| 39 | 1.1.1.3.6.1 | Release Candidate Software Architecture Document |  | 3d | 2007-05-14 A | 2007-05-16 A |  | 100% | 2007-04-11 | 2007-04-19 | 5d | start no earlier than 2007-05-14 |  | etavela [90%] | 21.6h | 21.6h |
| 40 | 1.1.1.4 | **Implementation** |  | 31.82d | 2007-04-02 A | 2007-05-15 A |  | 100% | 2007-04-02 | 2007-05-15 | 32d |  |  |  | 263.2h | 263.2h |
| 41 | 1.1.1.4.1 | Structure the Implementation Model |  | 1.5d | 2007-04-02 A | 2007-04-04 A |  | 100% | 2007-04-02 | 2007-04-04 | 1.5d | start no earlier than 2007-04-09 | 2007-04-06 | etavela | 12h | 12h |
| 42 | 1.1.1.4.2 | Implement Vocabulary Subsystem |  | 3w | 2007-04-13 A | 2007-05-08 A | 41, 35 | 100% | 2007-04-12 | 2007-05-08 | 3w |  |  | jpike | 120h | 120h |
| 43 | 1.1.1.4.3 | Implement Data Access |  | 3d | 2007-04-16 A | 2007-04-30 A | 41 | 100% | 2007-04-16 | 2007-04-24 | 3d | start no earlier than 2007-04-16 | 2007-04-20 | rsrinavasa | 24h | 24h |
| 44 | 1.1.1.4.4 | Implement Protocol Management |  | 2.2w | 2007-04-16 A | 2007-05-09 A | 34 | 100% | 2007-04-16 | 2007-05-09 | 2.1w | start no earlier than 2007-04-16 |  | jpike; rsrinavasa; etavela [10%] | 52h | 52h |
| 45 | 1.1.1.4.5 | Implement Protocol User Interface (minimal) |  | 3d | 2007-05-09 A | 2007-05-14 A | 44 | 100% | 2007-05-09 | 2007-05-14 | 3d |  |  | rsrinavasa; jpike | 48h | 48h |
| 46 | 1.1.1.4.6 | **Finalize Deliverables** |  | 1d | 2007-05-14 A | 2007-05-15 A |  | 100% | 2007-05-14 | 2007-05-15 | 1d |  |  |  | 7.2h | 7.2h |
| 47 | 1.1.1.4.6.1 | Release Architectural Prototype |  | 1d | 2007-05-14 A | 2007-05-15 A | 45 | 100% | 2007-05-14 | 2007-05-15 | 1d |  |  | etavela [90%] | 7.2h | 7.2h |
| 48 | 5 | **Test** |  | 31.82d | 2007-04-02 A | 2007-05-15 A |  | 100% | 2007-04-02 | 2007-05-15 | 31.07d |  |  |  | 27.8h | 27.8h |
| 49 | 1.1.1.5.1 | Meet with Indepdent QA |  | 2h | 2007-04-09 A | 2007-04-09 A |  | 100% | 2007-04-09 | 2007-04-09 | 2h | finish no later than 2007-04-27 | 2007-04-27 | bgendleman [80%] | 1.6h | 1.6h |
| 50 | 1.1.1.5.2 | Implement System Tests Against Protocol Management | milestone | 0d | 2007-05-15 A | 2007-05-15 A | 47 | 100% | 2007-05-15 | 2007-05-15 | 0d | start no earlier than 2007-05-14 |  | smatyas |  |  |
| 51 | 5.1 | Analyze and Identify Test Approach |  | 1d | 2007-04-02 A | 2007-04-27 A |  | 100% | 2007-04-02 | 2007-04-27 | 1d |  |  | smatyas; etavela; bgendleman | 8h | 8h |

| ID | WBS | Task | Type | Duration | Start | Finish | Predecessors | Complete | Remaining | Baseline start | Baseline finish | Baseline duration | Total slack | Free slack | Constraint | Deadline | Resources | Work | Actual work |
| --- | --- | --- | --- | --- | --- | --- | --- | --- | --- | --- | --- | --- | --- | --- | --- | --- | --- | --- | --- |
| 52 | 1.1.1.5.4 | **Finalize Deliverables** |  | 4.25d | 2007-04-27 A | 2007-05-03 A |  | 100% |  | 2007-04-27 | 2007-05-04 | 5d |  |  |  |  |  | 18.2h | 18.2h |
| 53 | 1.1.1.5.4.1 | Release Test Plan |  | 2.6d | 2007-04-27 A | 2007-05-03 A | 51 | 100% |  | 2007-04-27 | 2007-05-04 | 2.5d |  |  |  |  | smatyas; bgendleman [25%]; etavela [5%] | 18.2h | 18.2h |
| 54 | 6 | **Environment** |  | 30.25d | 2007-04-02 A | 2007-05-14 A |  | 100% |  | 2007-04-02 | 2007-05-14 | 30.25d |  |  |  |  |  | 136h | 136h |
| 55 | 1.1.1.6.1 | Launch Development Process |  | 6h | 2007-04-09 A | 2007-04-18 A |  | 100% |  | 2007-04-09 | 2007-04-18 | 6h |  |  | start no earlier than 2007-04-09 |  | smatyas; jpike; smiller; rsrinavasa | 12h | 12h |
| 56 | 1.1.1.6.2 | **Set Up Tools** |  | 20d | 2007-04-02 A | 2007-04-27 A |  | 100% |  | 2007-04-02 | 2007-04-27 | 20d |  |  |  |  |  | 76h | 76h |
| 57 | 1.1.1.6.2.1 | Set Up Maven |  | 4d | 2007-04-02 A | 2007-04-09 A |  | 100% |  | 2007-04-02 | 2007-04-09 | 4d |  |  | start no earlier than 2007-04-02 |  | smatyas [50%]; smiller [50%] | 16h | 16h |
| 58 | 1.1.1.6.2.2 | Set Up Continuous Integration |  | 1d | 2007-04-16 A | 2007-04-16 A |  | 100% |  | 2007-04-16 | 2007-04-16 | 1d |  |  | start no earlier than 2007-04-16 |  | smatyas | 8h | 8h |
| 59 | 1.1.1.6.2.3 | Set Up Eclipse |  | 2d | 2007-04-03 A | 2007-04-06 A |  | 100% |  | 2007-04-03 | 2007-04-06 | 2d |  |  | start no earlier than 2007-04-03 |  | jpike; smiller [50%] | 12h | 12h |
| 60 | 1.1.1.6.2.4 | Set Up Selenium |  | 2d | 2007-04-26 A | 2007-04-27 A | 58 | 100% |  | 2007-04-26 | 2007-04-27 | 2d |  |  | finish no earlier than 2007-04-27 | 2007-04-27 | smatyas | 16h | 16h |
| 61 | 1.1.1.6.2.5 | Set Up Code Quality Tools |  | 2d | 2007-04-02 A | 2007-04-09 A |  | 100% |  | 2007-04-02 | 2007-04-09 | 2d |  |  |  |  | smatyas; etavela | 24h | 24h |
| 62 | 1.1.1.6.3 | **Finalize Deliverables** |  | 19.25d | 2007-04-17 A | 2007-05-14 A |  | 100% |  | 2007-04-19 | 2007-05-14 | 17.25d |  |  |  |  |  | 48h | 48h |
| 63 | 1.1.1.6.3.1 | Release Development Case |  | 0.25d | 2007-05-14 A | 2007-05-14 A |  | 100% |  | 2007-05-14 | 2007-05-14 | 0.25d |  |  | start no earlier than 2007-05-14 |  | etavela | 2h | 2h |
| 64 | 1.1.1.6.3.2 | Release Guidelines for the Project |  | 1.25d | 2007-04-20 A | 2007-04-23 A |  | 100% |  | 2007-04-20 | 2007-04-23 | 1.25d |  |  | start no earlier than 2007-04-16 |  | etavela | 10h | 10h |
| 65 | 1.1.1.6.3.3 | Release Templates for the Project |  | 5.5d | 2007-04-17 A | 2007-04-30 A |  | 100% |  | 2007-04-19 | 2007-04-30 | 5.55d |  |  | finish no earlier than 2007-04-13 |  | smiller [50%]; etavela | 36h | 36h |
| 66 | 7 | **Configuration & Change Management** |  | 31.25d | 2007-04-02 A | 2007-05-15 A |  | 100% |  | 2007-04-02 | 2007-05-15 | 31.25d |  |  |  |  |  | 30h | 30h |
| 67 | 7.1 | Plan Project Configuration and Change Control |  | 0.5d | 2007-04-20 A | 2007-04-20 A |  | 100% |  | 2007-04-20 | 2007-04-24 | 0.55d |  |  | finish no earlier than 2007-04-20 | 2007-05-15 | etavela; bgendleman | 8h | 8h |
| 68 | 1.1.1.7.2 | **Finalize Deliverables** |  | 31.25d | 2007-04-02 A | 2007-05-15 A |  | 100% |  | 2007-04-02 | 2007-05-15 | 31.25d |  |  |  |  |  | 22h | 22h |
| 69 | 1.1.1.7.2.1 | Release Configuration Management Plan |  | 0.75d | 2007-04-02 A | 2007-05-15 A |  | 100% |  | 2007-04-02 | 2007-05-15 | 0.75d |  |  |  |  | etavela; bgendleman | 6h | 6h |
| 70 | 1.1.1.7.2.2 | G-Forge Implementation of the Change Control Process |  | 2d | 2007-04-02 A | 2007-05-14 A |  | 100% |  | 2007-04-02 | 2007-05-14 | 2d |  |  |  |  | bgendleman | 16h | 16h |
| 71 | 1.1.1.8 | Inception Complete | milestone | 0d | 2007-05-15 A | 2007-05-15 A | 4, 5, 26, 8, 52, 62, 68 | 100% |  | 2007-05-15 | 2007-05-15 | 0d |  |  | start no earlier than 2007-05-15 | 2007-05-15 |  |  |  |
| 72 | 1.2 | caArray 1.x Focus |  | 22d | 2007-05-17 A | 2007-06-18 A | 3 | 100% |  |  |  |  |  |  |  |  | etavela [90%]; bgendleman [80%]; smatyas; jpike | 651.2h | 651.2h |
| 73 | 1.3 | **Elaboration Phase** |  | 58.7d | 2007-06-18 A | 2007-09-06 | 71, 72 | 41% | 34.41d | 2007-05-15 | 2007-05-17 | 2.5d? | -1d | 0d |  | 2007-08-27 |  | 5332.11h | 2686.31h |
| 74 | 1.3.1 | **Elaboration - Iteration 1** |  | 29.7d | 2007-06-18 A | 2007-07-27 |  | 84% | 4.62d | 2007-05-15 | 2007-05-17 | 2.5d | 0d |  |  |  |  | 2822.51h | 2549.63h |
| 75 | 1 | **Project Management** |  | 29.7d | 2007-06-18 A | 2007-07-27 A | 71 | 100% |  | 2007-04-02 | 2007-05-15 | 31.25d |  |  |  |  |  | 532.8h | 532.8h |
| 76 | 1.3.1.1.1 | Inception Post Mortem |  | 4d | 2007-06-28 A | 2007-07-03 A |  | 100% |  | 2007-05-15 | 2007-05-17 | 20h |  |  | start no earlier than 2007-06-28 |  | smatyas; bgendleman [80%]; etavela [90%]; jpike; rsrinavasa | 150.4h | 150.4h |
| 77 | 1.4 | Plan Remainder of Initial Iteration |  | 1d | 2007-06-27 A | 2007-06-27 A |  | 100% |  | 2007-04-19 | 2007-04-19 | 1d |  |  | start no earlier than 2007-06-27 |  | etavela [90%]; bgendleman [80%] | 13.6h | 13.6h |
| 78 | 1.3.1.1.3 | Weekly Status Meetings |  | 1.5d | 2007-06-18 A | 2007-06-19 A |  | 100% |  |  |  |  |  |  | start no earlier than 2007-05-23 |  | bgendleman [80%] | 9.6h | 9.6h |
| 79 | 1.8 | Plan for Next Iteration |  | 1d | 2007-07-23 A | 2007-07-26 A | 84FF | 100% |  | 2007-05-07 | 2007-05-11 | 5d |  |  | start no earlier than 2007-07-23 |  | bgendleman [80%]; etavela [90%] | 13.6h | 13.6h |

Notes:
- 57: Instructions documented on Wiki
- 59: Instructions documented on Wiki
- 61: Cobertura, PMD, CheckStyle, Simian, JUnit
- 64: UML, Java, JSP/HTML
- 65: Java, JSP/HTML / Use Case Summary / Use Case Specification / Vision / Traceability Matrix - will attempt to do in EA

| ID | WBS | Task | Duration | Start | Finish | Predecessors | Complete | Remaining | Baseline start | Baseline finish | Baseline duration | Total slack | Free slack | Constraint | Deadline | Resources | Work | Actual work |
| --- | --- | --- | --- | --- | --- | --- | --- | --- | --- | --- | --- | --- | --- | --- | --- | --- | --- | --- |
| 80 | 1.3.1.1.5 | **Finalize Deliverables** | 29.7d | 2007-06-18 A | 2007-07-27 A |  | 100% |  | 2007-04-02 | 2007-05-15 | 31.25d |  |  |  |  |  | 345.6h | 345.6h |
| 81 | 1.3.1.1.5.1 | May Status Report | 2h | 2007-06-18 A | 2007-06-18 A |  | 100% |  | 2007-04-16 | 2007-04-16 | 2h |  |  | start no earlier than 2007-06-08 | 2007-04-18 | bgendleman | 2h | 2h |
| 82 | 1.3.1.1.5.2 | June Status Report | 2h | 2007-07-13 A | 2007-07-13 A |  | 100% |  |  |  |  |  |  |  |  | bgendleman | 2h | 2h |
| 83 | 1.3.1.1.5.3 | Update Risk List | 4h | 2007-06-18 A | 2007-07-27 A |  | 100% |  | 2007-04-02 | 2007-04-02 | 2h |  |  | finish no earlier than 2007-07-27 | 2007-05-15 | bgendleman [6774.3%] | 237.6h | 237.6h |
| 84 | 1.9 | Finalize Iteration Plans | 10d | 2007-07-13 A | 2007-07-26 A |  | 100% |  | 2007-05-11 | 2007-05-11 | 1d |  |  | finish no earlier than 2007-07-27 |  | bgendleman [80%]; etavela [50%] | 104h | 104h |
| 85 | 1.3.1.2 | **Requirements** | 27.7d | 2007-06-18 A | 2007-07-25 |  | 89% | 3.01d |  |  |  | 0d |  |  |  |  | 298.4h | 268h |
| 86 | 1.3.1.2.1 | Update Draft Documents | 3d | 2007-06-18 A | 2007-06-21 A |  | 100% |  |  |  |  |  |  | start no earlier than 2007-05-22 |  | bgendleman | 24h | 24h |
| 87 | 1.3.1.2.2 | Write Prioritized Use Cases | 10d | 2007-06-18 A | 2007-07-02 A |  | 100% |  |  |  |  |  |  | start no earlier than 2007-05-25 |  | bgendleman | 80h | 80h |
| 88 | 1.3.1.2.3 | Create Wireframes for targeted Ucs (deferred) | 3d | 2007-07-23 A | 2007-07-25 A | 87, 103 | 100% |  |  |  |  |  |  |  |  | bgendleman | 24h | 24h |
| 89 | 1.3.1.2.4 | Consolidate Models | 1d | 2007-06-18 A | 2007-06-19 A |  | 100% |  |  |  |  |  |  | start no earlier than 2007-05-24 |  | bgendleman [80%]; etavela [90%] | 13.6h | 13.6h |
| 90 | 1.3.1.2.5 | **Finalize Deliverables** | 26.7d | 2007-06-18 A | 2007-07-24 |  | 79% | 5.64d |  |  |  | -2d | 0d |  |  |  | 156.8h | 126.4h |
| 91 | 1.3.1.2.5.1 | Update Vision | 1d | 2007-06-21 A | 2007-06-22 A | 86 | 100% |  |  |  |  |  |  |  |  | bgendleman | 8h | 8h |
| 92 | 1.3.1.2.5.2 | Update Supplemental Specification | 1d | 2007-06-21 A | 2007-06-22 A | 86 | 100% |  |  |  |  |  |  |  |  | bgendleman | 8h | 8h |
| 93 | 1.3.1.2.5.3 | UC Login | 1d | 2007-06-18 A | 2007-06-19 A |  | 100% |  |  |  |  |  |  |  |  | bgendleman | 8h | 8h |
| 94 | 1.3.1.2.5.4 | UC Acquire Project Data via API | 2d | 2007-06-18 A | 2007-06-20 A |  | 100% |  |  |  |  |  |  |  |  | rsrinavasa | 16h | 16h |
| 95 | 1.3.1.2.5.5 | UC Manage Data Files | 2d | 2007-06-22 A | 2007-06-25 A |  | 100% |  |  |  |  |  |  |  |  | rsrinavasa; bgendleman [80%] | 28.8h | 28.8h |
| 96 | 1.3.1.2.5.6 | UC Import Project Data | 1d | 2007-07-02 A | 2007-07-03 A | 87 | 100% |  |  |  |  |  |  |  |  | bgendleman | 8h | 8h |
| 97 | 1.3.1.2.5.7 | UC Submit Project Proposal | 1d | 2007-07-03 A | 2007-07-04 A | 96 | 100% |  |  |  |  |  |  |  |  | bgendleman | 8h | 8h |
| 98 | 1.3.1.2.5.8 | UC Report on Work Accomplished | 1d | 2007-07-04 A | 2007-07-05 A | 97 | 100% |  |  |  |  |  |  |  |  | bgendleman | 8h | 8h |
| 99 | 1.3.1.2.5.9 | UC Validate File for Submission | 1d | 2007-07-05 A | 2007-07-06 A | 98 | 100% |  |  |  |  |  |  |  |  | bgendleman | 8h | 8h |
| 100 | 1.3.1.2.5.10 | UC Download Project Data (deferred) | 1d | 2007-07-06 A | 2007-07-09 A | 99 | 100% |  |  |  |  |  |  |  |  | bgendleman | 8h | 8h |
| 101 | 1.3.1.2.5.11 | UC Manage Users | 1d | 2007-07-09 A | 2007-07-10 A | 100 | 100% |  |  |  |  |  |  |  |  | bgendleman | 8h | 8h |
| 102 | 1.3.1.2.5.12 | UC Manage Institutional Groups | 1d | 2007-07-10 A | 2007-07-11 A | 101 | 100% |  |  |  |  |  |  |  |  | bgendleman | 8h | 8h |
| 103 | 1.3.1.2.5.13 | UX Modeling/Wireframes (deferred) | 2d | 2007-07-19 A | 2007-07-20 | 102 | 10% | 1.8d |  |  |  | -82d | 0d |  |  | bgendleman | 16h | 1.6h |
| 104 | 1.3.1.2.5.14 | Stylesheet Framework (deferred) | 2d | 2007-07-23 | 2007-07-24 | 103 |  |  |  |  |  | -82d | 0d |  |  | bgendleman | 16h |  |

| ID | WBS | Task | Duration | Start | Finish | Predecessors | Complete | Remaining | Total slack | Free slack | Constraint | Resources | Work | Actual work |
| --- | --- | --- | --- | --- | --- | --- | --- | --- | --- | --- | --- | --- | --- | --- |
| 105 | 1.3.1.3 | **Analysis and Design** | 29.7d | 2007-06-18 A | 2007-07-27 |  | 70% | 8.91d | 0d |  |  |  | 536.59h | 429.71h |
| 106 | 1.3.1.3.1 | Targeted Use Case Analysis and Design | 10d | 2007-07-02 A | 2007-07-16 A | 76, 87 | 100% |  |  |  | start no earlier than 2007-05-23 | etavela [90%]; jpike; rsrinavasa | 232h | 232h |
| 107 | 1.3.1.3.2 | MIAME and MAGE-TAB Comparison | 2d | 2007-07-05 A | 2007-07-06 A |  | 100% |  |  |  | start no earlier than 2007-07-05 | etavela [10%]; jpike; rsrinavasa | 33.6h | 33.6h |
| 108 | 1.3.1.3.3 | Grid Strategy - Deferred | 8.53d | 2007-06-18 A | 2007-06-28 |  | 75% | 2.13d | -6.16d | 0d |  | etavela [25%]; rsrinavasa | 36h | 31.74h |
| 109 | 1.3.1.3.4 | Parsing Strategy | 3d | 2007-07-16 A | 2007-07-19 A | 106 | 100% |  |  |  |  | etavela [90%] | 21.6h | 21.6h |
| 110 | 1.3.1.3.5 | Binary Storage | 3d | 2007-07-16 A | 2007-07-19 A | 106 | 100% |  |  |  |  | etavela [90%] | 21.6h | 21.6h |
| 111 | 1.3.1.3.6 | Represent SNP Data - Deferred | 3d | 2007-06-18 A | 2007-06-21 A |  | 100% |  |  |  | start no earlier than 2007-05-24 |  |  |  |
| 112 | 1.3.1.3.7 | Security - Deferred | 3d | 2007-07-16 A | 2007-07-19 | 106 | 20% | 2.4d | -78.3d | 0d | start no earlier than 2007-05-29 |  |  |  |
| 113 | 1.3.1.3.8 | 1.6 Data Migration Strategy | 2d | 2007-07-16 A | 2007-07-18 | 106 | 20% | 1.6d | -77.3d | 0d |  | etavela [90%]; smatyas [50%] | 22.4h | 4.48h |
| 114 | 1.3.1.3.9 | **Finalize Deliverables** | 21.17d | 2007-06-28 A | 2007-07-27 |  | 50% | 10.59d | 0d |  |  |  | 169.39h | 84.69h |
| 115 | 1.3.1.3.9.1 | Update Software Architecture Document | 21.17d | 2007-06-28 A | 2007-07-27 | 108 | 50% | 10.59d | 0d |  | finish no earlier than 2007-07-27 | etavela | 169.39h | 84.69h |
| 116 | 1.3.1.4 | **Implementation** | 19.34d | 2007-07-02 A | 2007-07-27 |  | 83% | 3.25d | -1.34d | 0d |  |  | 356h | 287.6h |
| 117 | 1.3.1.4.1 | Implement UC Import Project Data | 5d | 2007-07-19 A | 2007-07-26 | 109 | 90% | 0.5d | -83.3d | 0d |  | bmason; rsrinavasa; jpike; etavela [90%] | 110.4h | 94.8h |
| 118 | 1.3.1.4.2 | Implement UC Submit Project Proposal | 2d | 2007-07-23 A | 2007-07-24 A |  | 100% |  |  |  | start no earlier than 2007-07-23 | etavela [90%]; tparnell | 30.4h | 30.4h |
| 119 | 1.3.1.4.3 | Implement UC Login (incomplete) | 5d | 2007-07-02 A | 2007-07-09 A | 87 | 100% |  |  |  | start no earlier than 2007-06-01 | jpike | 40h | 40h |
| 120 | 1.3.1.4.4 | Implement UC Acquire Project Data via API | 10d | 2007-07-09 A | 2007-07-23 | 119 | 70% | 3d | -80.3d | 0d |  | etavela [90%]; rsrinavasa | 152h | 106.4h |
| 121 | 1.3.1.4.5 | Implement UC Manage Project Data Files (to support import) | 2d | 2007-07-23 A | 2007-07-25 A | 120 | 100% |  |  |  |  | tparnell | 16h | 16h |
| 122 | 1.3.1.4.6 | **Finalize Deliverables** | 0.64d | 2007-07-27 | 2007-07-27 |  |  |  | -84.64d | 0d |  |  | 7.2h |  |
| 123 | 1.3.1.4.6.1 | Release Final E1 Development Build | 0.64d | 2007-07-27 | 2007-07-27 |  |  |  | -84.64d | 0d | start no earlier than 2007-07-27 | etavela [90%]; smatyas [50%] | 7.2h |  |
| 124 | 1.3.1.5 | **Test** | 9d | 2007-07-16 A | 2007-07-27 |  | 50% | 4.5d | -4d | 0d |  |  | 175.2h | 116h |
| 125 | 1.3.1.5.1 | Create Functional Test for targeted UC's | 5d | 2007-07-16 A | 2007-07-23 A | 106 | 100% |  |  |  |  | jpike; rsrinavasa; etavela [90%] | 116h | 116h |
| 126 | 1.3.1.5.2 | Incorporate Test Cases into Gforge (Deferred) | 1d | 2007-07-25 | 2007-07-25 |  |  |  | -83d | 0d | start no earlier than 2007-07-25 | bgendleman | 8h |  |
| 127 | 1.3.1.5.3 | Manage Test Assets (Deferred) | 2d | 2007-07-23 | 2007-07-25 | 125 |  |  | -84.3d | 0d |  | smatyas [50%]; etavela [90%]; bgendleman [80%] | 35.2h |  |
| 128 | 1.3.1.5.4 | **Finalize Deliverables** | 2d | 2007-07-25 | 2007-07-27 |  |  |  | -84.3d | 0d |  |  | 16h |  |
| 129 | 1.3.1.5.4.1 | Release Test Plan (Deferred) | 2d | 2007-07-25 | 2007-07-27 | 127 |  |  | -84.3d | 0d |  | bgendleman | 16h |  |

Notes:
- 125: Selenium for Browser, Junit for API

| ID | WBS | Task | Type | Duration | Start | Finish | Predecessors | Complete | Remaining | Baseline start | Baseline finish | Baseline duration | Total slack | Free slack | Constraint | Resources | Work | Actual work |
| --- | --- | --- | --- | --- | --- | --- | --- | --- | --- | --- | --- | --- | --- | --- | --- | --- | --- | --- |
| 130 | 1.3.1.6 | **Environment** |  | 29.7d | 2007-06-18 A | 2007-07-27 |  | 93% | 1.98d |  |  |  | 0d |  |  |  | 519.6h | 511.6h |
| 131 | 1.3.1.6.1 | Create and Revise ARC Document |  | 1d | 2007-07-10 A | 2007-07-10 A |  | 100% |  |  |  |  |  |  | start no earlier than 2007-07-10 | bgendleman | 8h | 8h |
| 132 | 1.3.1.6.2 | Work with Systems to Establish Dev and QA Boxes |  | 1d | 2007-06-18 A | 2007-07-27 A |  | 100% |  |  |  |  |  |  | finish no earlier than 2007-07-27 | bgendleman | 8h | 8h |
| 133 | 1.3.1.6.3 | Craft Draft Build and Deploy Plan |  | 4.2w | 2007-06-29 A | 2007-07-27 A |  | 100% |  |  |  |  |  |  | finish no earlier than 2007-07-27 | pduvall; aglover; smatyas [25%]; bgendleman [10%]; etavela [10%] | 411.6h | 411.6h |
| 134 | 1.3.1.6.4 | Integrate Automation Scripts to Support Dev to QA Builds |  | 1w | 2007-06-18 A | 2007-06-25 A |  | 100% |  |  |  |  |  |  |  | pduvall; aglover; etavela [10%] | 84h | 84h |
| 135 | 1.3.1.6.5 | Integrate Test Suite into Gforge (deferred) |  | 2d | 2007-07-25 | 2007-07-27 | 127 |  |  |  |  |  | -84.3d | 0d |  | smatyas [50%] | 8h |  |
| 136 | 1.3.1.7 | **Configuration and Change Management** |  | 29.7d | 2007-06-18 A | 2007-07-27 A |  | 100% |  |  |  |  |  |  |  |  | 403.92h | 403.92h |
| 137 | 1.3.1.7.1 | Manage Gforge Content |  | 29.7d | 2007-06-18 A | 2007-07-27 A |  | 100% |  |  |  |  |  |  | finish no earlier than 2007-07-27 | bgendleman [80%]; etavela [90%] | 403.92h | 403.92h |
| 138 | 1.3.1.8 | Elaboration 1 Complete | milestone | 0d | 2007-07-27 A | 2007-07-27 A | 129 | 100% |  |  |  |  |  |  | start no earlier than 2007-06-27 |  |  |  |
| 139 | 1.3.2 | **Elaboration - Iteration 2** |  | 29.7d | 2007-07-27 A | 2007-09-06 | 138 | 4% | 28.41d | 2007-05-15 | 2007-05-16 | 1d? | -1d | 0d |  |  | 2509.6h | 136.68h |
| 140 | 1.3.2.1 | **Project Management** |  | 28.7d | 2007-07-27 A | 2007-09-05 |  | 9% | 26.26d |  |  |  | 0d |  |  | bgendleman | 1011.2h | 93.28h |
| 141 | 1.3.2.1.1 | Dev Team Iteration Plan |  | 1d | 2007-07-31 A | 2007-07-31 A |  | 100% |  |  |  |  |  |  | start no earlier than 2007-07-31 | bgendleman; etavela [90%]; smatyas [50%]; bmason; tparnell | 35.2h | 35.2h |
| 142 | 1.3.2.1.2 | E1 Assessment |  | 0.5d | 2007-07-30 A | 2007-07-30 A |  | 100% |  |  |  |  |  |  |  | bgendleman; etavela [90%] | 4h | 4h |
| 143 | 1.3.2.1.3 | E2 Review |  | 1d | 2007-08-13 | 2007-08-13 |  |  |  |  |  |  | -96d | 0d | start no earlier than 2007-08-13 | bgendleman | 8h |  |
| 144 | 1.3.2.1.4 | Weekly Status Meetings |  | 3d | 2007-09-03 A | 2007-09-05 |  | 20% | 2.4d |  |  |  | 0d |  | finish no earlier than 2007-09-05 | bgendleman | 24h | 4.8h |
| 145 | 1.3.2.1.5 | Hold Dev to QA Handoff |  | 2d | 2007-08-16 | 2007-08-17 |  |  |  |  |  |  | -100d | 0d | start no earlier than 2007-08-16 | bgendleman [80%]; smatyas [50%]; etavela [90%]; pduvall | 51.2h |  |
| 146 | 1.3.2.1.6 | Plan for Next Iteration |  | 2d | 2007-08-24 A | 2007-08-27 |  | 25% | 1.5d |  |  |  | -106d | 0d | start no earlier than 2007-08-24 | bgendleman | 16h | 4h |
| 147 | 1.3.2.1.7 | **Finalize Deliverables** |  | 21.7d | 2007-07-27 A | 2007-08-27 |  | 5% | 20.67d |  |  |  | -18.7d | 0d |  | bgendleman | 648.8h | 26.22h |
| 148 | 1.3.2.1.7.1 | Deliver E2 Plan |  | 3d | 2007-07-27 A | 2007-08-01 |  | 75% | 0.75d |  |  |  | -87.3d | 0d |  | bgendleman | 24h | 18h |
| 149 | 1.3.2.1.7.2 | Update Risk List |  | 10d | 2007-07-30 | 2007-08-10 |  |  |  |  |  |  | -95d | 0d | finish no earlier than 2007-08-10 | bgendleman | 80h |  |
| 150 | 1.3.2.1.7.3 | Establish Plan for Alpha and Beta Releases |  | 17d | 2007-08-03 | 2007-08-27 |  |  |  |  |  |  | -106d | 0d | start no earlier than 2007-08-03 | bgendleman [80%]; etavela [90%] | 231.2h |  |
| 151 | 1.3.2.1.7.4 | July Status Report |  | 0.5d | 2007-08-17 | 2007-08-17 |  |  |  |  |  |  | -100d | 0d | finish no earlier than 2007-08-17 | bgendleman | 4h |  |
| 152 | 1.3.2.1.7.5 | Finalize C1 Iteration Plans |  | 17d | 2007-08-03 | 2007-08-27 |  |  |  |  |  |  | -106d | 0d | start no earlier than 2007-08-03 | bgendleman | 136h |  |
| 153 | 1.3.2.2 | **Requirements** |  | 21.48d | 2007-07-27 A | 2007-08-27 |  | 2% | 21d |  |  |  | -12.78d | 0d |  |  | 368h | 13h |
| 154 | 1.3.2.2.1 | Incorporate Stakeholder Feedback on Vision and Supp Spec |  | 16d | 2007-08-01 | 2007-08-22 |  |  |  |  |  |  | -103d | 0d | start no earlier than 2007-08-01 | bgendleman | 128h |  |
| 155 | 1.3.2.2.2 | Incorporate Stakeholder Feedback on E1 Use Cases |  | 3d | 2007-07-27 | 2007-08-01 |  |  |  |  |  |  | -87.3d | 0d |  | bgendleman | 24h |  |
| 156 | 1.3.2.2.3 | UX Modeling/Wireframes (from E1 deferred) |  | 5d | 2007-08-02 | 2007-08-08 |  |  |  |  |  |  | -105.78d | 0d | start no earlier than 2007-08-02 |  |  |  |
| 157 | 1.3.2.2.4 | UI Mockups for Prioritized Use Cases |  | 5d | 2007-08-09 | 2007-08-15 | 156 |  |  |  |  |  | -105.78d | 0d |  |  |  |  |
| 158 | 1.3.2.2.5 | Stylesheet Framework (from E1 deferred) |  | 7.78d | 2007-08-16 | 2007-08-27 | 157 |  |  |  |  |  | -105.78d | 0d |  | bgendleman [80%]; lpower | 112h |  |

Notes:
- 156: Validate Project Data Files / Manage Project Permissions

| ID | WBS | Task | Duration | Start | Finish | Predecessors | Complete | Remaining | Total slack | Free slack | Constraint | Resources | Work | Actual work |
| --- | --- | --- | --- | --- | --- | --- | --- | --- | --- | --- | --- | --- | --- | --- |
| 159 | 1.3.2.2.6 | **Detail E2 Use Cases** | 5d | 2007-08-02 A | 2007-08-08 |  | 13% | 4.38d | 0d |  |  | bgendleman | 104h | 13h |
| 160 | 1.3.2.2.6.1 | UC Download Project Data (from E1 deferred) | 0.5d | 2007-08-03 | 2007-08-03 |  |  |  | -91d | 0d | start no earlier than 2007-08-03 | bgendleman | 4h |  |
| 161 | 1.3.2.2.6.2 | UC Manage Users | 0.5d | 2007-08-03 | 2007-08-03 | 160 |  |  | -91d | 0d |  | bgendleman | 4h |  |
| 162 | 1.3.2.2.6.3 | UC Manage Project Permissions | 1d | 2007-08-06 | 2007-08-06 | 161 |  |  | -91d | 0d | start no earlier than 2007-08-02 | bgendleman | 8h |  |
| 163 | 1.3.2.2.6.4 | Capture Special Requirements for SNPs | 5d | 2007-08-02 A | 2007-08-08 |  | 20% | 4d | -93d | 0d | start no earlier than 2007-08-02 | bgendleman | 40h | 8h |
| 164 | 1.3.2.2.6.5 | Validate Project Data Files: Define Validation Rules | 1d | 2007-08-03 | 2007-08-03 |  |  |  | -90d | 0d | start no earlier than 2007-08-03 | bgendleman | 8h |  |
| 165 | 1.3.2.3 | **Analysis and Design** | 22d | 2007-08-06 | 2007-09-04 |  |  |  | -114d | 0d |  |  | 280h |  |
| 166 | 1.3.2.3.1 | **Use-Case Design** | 5d | 2007-08-06 | 2007-08-10 |  |  |  | -112d | 0d |  |  | 40h |  |
| 167 | 1.3.2.3.1.1 | Manage Project Permissions | 3d | 2007-08-07 | 2007-08-09 | 218 |  |  | -112d | 0d | start no earlier than 2007-08-06 | etavela | 24h |  |
| 168 | 1.3.2.3.1.2 | Validate Project Data Files | 1d | 2007-08-10 | 2007-08-10 | 167 |  |  | -112d | 0d |  | etavela | 8h |  |
| 169 | 1.3.2.3.1.3 | Login | 1d | 2007-08-06 | 2007-08-06 |  |  |  | -112d | 0d | start no earlier than 2007-08-06 | jpike | 8h |  |
| 170 | 1.3.2.3.2 | Logical Model Final Draft | 2d | 2007-08-06 | 2007-08-07 | 187 |  |  | -95.5d | 0d |  | rsrinavasa | 16h |  |
| 171 | 1.3.2.3.3 | **Subsystem Design** | 8d | 2007-08-06 | 2007-08-15 |  |  |  | -114d | 0d |  |  | 192h |  |
| 172 | 1.3.2.3.3.1 | FileAccessService | 4d | 2007-08-07 | 2007-08-10 | 169 |  |  | -112d | 0d |  | jpike | 32h |  |
| 173 | 1.3.2.3.3.2 | MageTabParser: Validation | 4d | 2007-08-06 | 2007-08-09 | 186 |  |  | -114d | 0d |  | bmason | 32h |  |
| 174 | 1.3.2.3.3.3 | ArrayDataService: Validation | 2d | 2007-08-10 | 2007-08-13 | 173 |  |  | -114d | 0d |  | bmason | 16h |  |
| 175 | 1.3.2.3.3.4 | ArrayDesignService: Validation | 2d | 2007-08-14 | 2007-08-15 | 174 |  |  | -114d | 0d |  | bmason | 16h |  |
| 176 | 1.3.2.3.3.5 | Remote API Grid Implementation | 2.5d | 2007-08-08 | 2007-08-10 | 170 |  |  | -95.5d | 0d |  | rsrinavasa; tparnell | 40h |  |
| 177 | 1.3.2.3.3.6 | PermissionsManagementService | 3d | 2007-08-06 | 2007-08-08 | 184 |  |  | -104d | 0d |  | tparnell | 24h |  |
| 178 | 1.3.2.3.3.7 | Authorization Mechanism | 4d | 2007-08-09 | 2007-08-14 | 177 |  |  | -104d | 0d |  | tparnell | 32h |  |
| 179 | 1.3.2.3.4 | External Review: Grid API | 1d | 2007-08-10 | 2007-08-13 | 176 |  |  | -95.5d | 0d |  | etavela; jpike | 16h |  |
| 180 | 1.3.2.3.5 | **Finalize Deliverables** | 2d | 2007-09-03 | 2007-09-04 |  |  |  | -112d | 0d |  |  | 16h |  |
| 181 | 1.3.2.3.5.1 | Update Software Architecture Document | 2d | 2007-09-03 | 2007-09-04 | 211 |  |  | -112d | 0d | start no earlier than 2007-08-29 | etavela | 16h |  |
| 182 | 1.3.2.4 | **Implementation** | 27d | 2007-08-01 A | 2007-09-06 |  | 5% | 25.58d | -24d | 0d |  |  | 480h | 24h |
| 183 | 1.3.2.4.1 | **E1 Completion** | 3d | 2007-08-01 A | 2007-08-03 |  | 25% | 2.25d | 0d |  |  |  | 120h | 24h |
| 184 | 1.3.2.4.1.1 | Complete Hibernate Mappings | 3d | 2007-08-01 A | 2007-08-03 A |  | 100% |  |  |  | start no earlier than 2007-08-01 | tparnell | 24h | 24h |
| 185 | 1.3.2.4.1.2 | Remote Java API | 3d | 2007-08-01 | 2007-08-03 |  |  |  | -112d | 0d | start no earlier than 2007-08-01 | etavela; smatyas | 48h |  |
| 186 | 1.3.2.4.1.3 | Complete MAGE-TAB parsing | 3d | 2007-08-01 | 2007-08-03 |  |  |  | -114d | 0d | start no earlier than 2007-08-01 | bmason | 24h |  |
| 187 | 1.3.2.4.1.4 | Complete MAGE-TAB translation | 3d | 2007-08-01 | 2007-08-03 |  |  |  | -95.5d | 0d | start no earlier than 2007-08-01 | bmason | 24h |  |

Notes:
- 163: What's different about SNP domain model / SNP Vocabulary (where do SNP terms, experiment types)
- 164: Validation rules for: / MAGE-TAB (all) / Affymetrix CDF, CHP, CEL / Illumina design and data files / Genepix GPR and GAL
- 177: csm meeting needed / no csm integration / potential dependency on login and authentication

| ID | WBS | Task | Duration | Start | Finish | Predecessors | Total slack | Free slack | Constraint | Resources | Work |
| --- | --- | --- | --- | --- | --- | --- | --- | --- | --- | --- | --- |
| 188 | 1.3.2.4.2 | **Subsystem Implementation** | 17d | 2007-08-13 | 2007-09-04 |  | -112d | 0d |  |  | 216h |
| 189 | 1.3.2.4.2.1 | FileAccessService | 5d | 2007-08-13 | 2007-08-17 | 172 | -112d | 0d |  | jpike | 40h |
| 190 | 1.3.2.4.2.2 | MageTabParser: Validation | 5d | 2007-08-16 | 2007-08-22 | 175 | -114d | 0d |  | bmason | 40h |
| 191 | 1.3.2.4.2.3 | ArrayDataService: Validation | 3d | 2007-08-23 | 2007-08-27 | 190 | -114d | 0d |  | bmason | 24h |
| 192 | 1.3.2.4.2.4 | ArrayDesignService: Validation | 2d | 2007-08-28 | 2007-08-29 | 191 | -114d | 0d |  | bmason | 16h |
| 193 | 1.3.2.4.2.5 | PermissionsManagement | 5d | 2007-08-15 | 2007-08-21 | 178 | -104d | 0d |  | tparnell | 40h |
| 194 | 1.3.2.4.2.6 | Object Access Authorization Mechanism | 2d | 2007-08-22 | 2007-08-23 | 193 | -104d | 0d |  | tparnell | 16h |
| 195 | 1.3.2.4.2.7 | Remote API Grid Implementation | 5d | 2007-08-29 | 2007-09-04 | 206 | -112d | 0d | start no earlier than 2007-08-27 | tparnell | 40h |
| 196 | 1.3.2.4.3 | **Implement Use Cases** | 5d | 2007-08-15 | 2007-08-21 |  | -112d | 0d |  |  | 40h |
| 197 | 1.3.2.4.3.1 | Manage Project Permissions | 3d | 2007-08-15 | 2007-08-17 | 213 | -112d | 0d |  | etavela | 24h |
| 198 | 1.3.2.4.3.2 | Validate Project Data Files | 1d | 2007-08-20 | 2007-08-20 | 197 | -112d | 0d |  | etavela | 8h |
| 199 | 1.3.2.4.3.3 | Login | 1d | 2007-08-21 | 2007-08-21 | 198 | -112d | 0d |  | etavela | 8h |
| 200 | 1.3.2.4.4 | **Implement Additional Array Design Parsers** | 10d | 2007-08-20 | 2007-08-31 |  | -114d | 0d |  |  | 40h |
| 201 | 1.3.2.4.4.1 | Illumina | 3d | 2007-08-20 | 2007-08-22 | 189 | -112d | 0d |  | jpike | 24h |
| 202 | 1.3.2.4.4.2 | Affymetrix SNP | 2d | 2007-08-30 | 2007-08-31 | 192 | -114d | 0d |  | bmason | 16h |
| 203 | 1.3.2.4.5 | **Implement Additional Array Data Parsers** | 11d | 2007-08-23 | 2007-09-06 |  | -114d | 0d |  |  | 64h |
| 204 | 1.3.2.4.5.1 | Illumina | 4d | 2007-09-03 | 2007-09-06 | 202 | -114d | 0d |  | bmason | 32h |
| 205 | 1.3.2.4.5.2 | Affymetrix SNP | 2d | 2007-08-23 | 2007-08-24 | 201 | -112d | 0d |  | jpike | 16h |
| 206 | 1.3.2.4.5.3 | Affymetrix CHP | 2d | 2007-08-27 | 2007-08-28 | 205 | -112d | 0d |  | jpike | 16h |
| 207 | 1.3.2.5 | **Test** | 15d | 2007-08-13 | 2007-08-31 |  | -112d | 0d |  |  | 100h |
| 208 | 1.3.2.5.1 | Validate Project Data Files Test Cases | 1d | 2007-08-22 | 2007-08-22 | 199 | -112d | 0d |  | etavela | 8h |
| 209 | 1.3.2.5.2 | Manage Permission Test Cases | 1d | 2007-08-23 | 2007-08-23 | 208 | -112d | 0d |  | etavela | 8h |
| 210 | 1.3.2.5.3 | Import Data Files Test Suite | 1d | 2007-08-24 | 2007-08-24 | 209 | -112d | 0d |  | etavela | 8h |
| 211 | 1.3.2.5.4 | Remote Java API Test Suite | 5d | 2007-08-27 | 2007-08-31 | 210 | -112d | 0d |  | smatyas [50%]; etavela | 60h |

Notes:
- 196: The bulk of the implementation work is in the Subsystems -- this is the front end code to tie functionality together

| ID | WBS | Task | Type | Duration | Start | Finish | Predecessors | Complete | Remaining | Baseline start | Baseline finish | Baseline duration | Total slack | Free slack | Constraint | Resources | Work | Actual work |
| --- | --- | --- | --- | --- | --- | --- | --- | --- | --- | --- | --- | --- | --- | --- | --- | --- | --- | --- |
| 212 | 1.3.2.5.5 | **Finalize Deliverables** |  | 2d | 2007-08-13 | 2007-08-14 |  |  |  |  |  |  | -112d | 0d |  |  | 16h |  |
| 213 | 1.3.2.5.5.1 | Release Test Plan |  | 2d | 2007-08-13 | 2007-08-14 | 168 |  |  |  |  |  | -112d | 0d |  | etavela | 16h |  |
| 214 | 1.3.2.6 | **Environment** |  | 12d | 2007-08-01 A | 2007-08-16 |  | 12% | 10.53d |  |  |  | -9d | 0d |  |  | 70.4h | 6.4h |
| 215 | 1.3.2.6.1 | Review Build and Deploy Plan with SCM Initiative |  | 0.4d | 2007-08-01 A | 2007-08-01 A |  | 100% |  |  |  |  |  |  | start no earlier than 2007-08-01 | aglover; pduvall | 6.4h | 6.4h |
| 216 | 1.3.2.6.2 | Review and Demonstration Meetings (Eng + Prod / QA / Systems |  | 3d | 2007-08-01 | 2007-08-06 | 215 |  |  |  |  |  | -90.4d | 0d |  |  |  |  |
| 217 | 1.3.2.6.3 | Complete Acquisition of DEV and QA Environment |  | 2d | 2007-08-02 A | 2007-08-03 |  | 50% | 1d |  |  |  | -1d | 0d | finish no earlier than 2007-08-02 |  |  |  |
| 218 | 1.3.2.6.4 | Development Process "Quick Start" |  | 1d | 2007-08-06 | 2007-08-06 | 185 |  |  |  |  |  | -112d | 0d |  | etavela | 8h |  |
| 219 | 1.3.2.6.5 | Complete DEV to QA Integration |  | 3d | 2007-08-06 | 2007-08-08 | 217 |  |  |  |  |  | -95d | 0d |  | aglover; pduvall | 48h |  |
| 220 | 1.3.2.6.6 | Incorporate Automated Deployment Process |  | 2d | 2007-08-15 | 2007-08-16 | 219 |  |  |  |  |  | -99d | 0d | finish no earlier than 2007-08-16 | smatyas [50%] | 8h |  |
| 221 | 1.3.2.7 | **Configuration and Change Management** |  | 25d | 2007-07-27 | 2007-08-31 |  |  |  |  |  |  | -109.3d | 0d |  |  | 200h |  |
| 222 | 1.3.2.7.1 | Manage Gforge Content |  | 25d | 2007-07-27 | 2007-08-31 |  |  |  |  |  |  | -109.3d | 0d |  | bgendleman | 200h |  |
| 223 | 1.3.2.8 | Elaboration 2 Complete | milestone | 0d | 2007-09-06 | 2007-09-06 | 195, 204 |  |  |  |  |  | -114d | 0d | start no earlier than 2007-08-31 |  |  |  |
| 224 | 1.4 | **Construction Phase** |  | 60d | 2007-09-07 | 2007-11-29 | 73 |  |  | 2007-05-17 | 2007-05-18 | 1d? | -114d | 0d |  |  | 883.2h |  |
| 225 | 1.4.1 | **Construction - Iteration 1** |  | 20d | 2007-09-07 | 2007-10-04 | 223 |  |  | 2007-05-17 | 2007-05-18 | 1d? | -114d | 0d |  |  | 883.2h |  |
| 226 | 1.4.1.1 | **Project Management** |  | 20d | 2007-09-07 | 2007-10-04 |  |  |  |  |  |  | -74d | 0d |  |  | 475.2h |  |
| 227 | 1.4.1.1.1 | Weekly Status Meetings |  | 20d | 2007-09-07 | 2007-10-04 |  |  |  |  |  |  | -74d | 0d |  |  |  |  |
| 228 | 1.4.1.1.2 | Dev Team Iteration Plan |  | 1d | 2007-09-07 | 2007-09-07 |  |  |  |  |  |  | -56d | 0d |  |  |  |  |
| 229 | 1.4.1.1.3 | E2 Assessment |  | 1d | 2007-09-10 | 2007-09-10 | 228 |  |  |  |  |  | -56d | 0d |  |  |  |  |
| 230 | 1.4.1.1.4 | C1 Review |  | 1d | 2007-09-28 | 2007-09-28 |  |  |  |  |  |  | -70d | 0d | start no earlier than 2007-09-28 |  |  |  |
| 231 | 1.4.1.1.5 | Plan for Next Iteration |  | 2d | 2007-10-01 | 2007-10-02 |  |  |  |  |  |  | -72d | 0d | start no earlier than 2007-10-01 |  |  |  |
| 232 | 1.4.1.1.6 | **Finalize Deliverables** |  | 17d | 2007-09-07 | 2007-10-01 |  |  |  |  |  |  | -71d | 0d |  |  | 475.2h |  |
| 233 | 1.4.1.1.6.1 | Deliver C1 Plan |  | 3d | 2007-09-07 | 2007-09-11 |  |  |  |  |  |  | -57d | 0d |  | bgendleman | 24h |  |
| 234 | 1.4.1.1.6.2 | Update Risk List |  | 10d | 2007-09-07 | 2007-09-20 |  |  |  |  |  |  | -64d | 0d | finish no earlier than 2007-08-10 | bgendleman | 80h |  |
| 235 | 1.4.1.1.6.3 | Update Alpha and Beta Release Plan |  | 17d | 2007-09-07 | 2007-10-01 |  |  |  |  |  |  | -71d | 0d | start no earlier than 2007-08-03 | bgendleman [80%]; etavela [90%] | 231.2h |  |
| 236 | 1.4.1.1.6.4 | August Status Report |  | 0.5d | 2007-09-07 | 2007-09-07 |  |  |  |  |  |  | -54.5d | 0d | finish no earlier than 2007-08-17 | bgendleman | 4h |  |
| 237 | 1.4.1.1.6.5 | Finalize C2 Iteration Plans |  | 17d | 2007-09-07 | 2007-10-01 |  |  |  |  |  |  | -71d | 0d | start no earlier than 2007-08-03 | bgendleman | 136h |  |

| ID | WBS | Task | Type | Duration | Start | Finish | Predecessors | Baseline start | Baseline finish | Baseline duration | Total slack | Free slack | Constraint | Resources | Work |
| --- | --- | --- | --- | --- | --- | --- | --- | --- | --- | --- | --- | --- | --- | --- | --- |
| 238 | 1.4.1.2 | **Requirements** |  | 16d | 2007-09-07 | 2007-09-28 |  |  |  |  | -70d | 0d |  |  | 408h |
| 239 | 1.4.1.2.1 | Incorporate Stakeholder Feedback on Vision and Supp Spec |  | 16d | 2007-09-07 | 2007-09-28 |  |  |  |  | -70d | 0d | start no earlier than 2007-08-01 | bgendleman | 128h |
| 240 | 1.4.1.2.2 | Incorporate Stakeholder Feedback on E2 Use Cases |  | 16d | 2007-09-07 | 2007-09-28 |  |  |  |  | -70d | 0d |  | bgendleman | 128h |
| 241 | 1.4.1.2.3 | Incorporate Stakeholder Feedback on UI Mockups |  | 16d | 2007-09-07 | 2007-09-28 |  |  |  |  | -70d | 0d |  | bgendleman | 128h |
| 242 | 1.4.1.2.4 | Create Search Wireframes and Mockups |  | 3d | 2007-09-07 | 2007-09-11 |  |  |  |  | -57d | 0d |  | mrehfuss | 24h |
| 243 | 1.4.1.3 | Analysis and Design |  | 20d | 2007-09-07 | 2007-10-04 |  |  |  |  | -74d | 0d |  |  |  |
| 244 | 1.4.1.4 | Implementation |  | 20d | 2007-09-07 | 2007-10-04 |  |  |  |  | -74d | 0d |  |  |  |
| 245 | 1.4.1.5 | Test |  | 20d | 2007-09-07 | 2007-10-04 |  |  |  |  | -74d | 0d |  |  |  |
| 246 | 1.4.1.6 | Environment |  | 20d | 2007-09-07 | 2007-10-04 |  |  |  |  | -74d | 0d |  |  |  |
| 247 | 1.4.1.7 | Configuration and Change Management |  | 20d | 2007-09-07 | 2007-10-04 |  |  |  |  | -114d | 0d |  |  |  |
| 248 | 1.4.1.8 | C1 Complete - Alpha Release 1 | milestone | 0d | 2007-10-04 | 2007-10-04 | 247 |  |  |  | -114d | 0d |  |  |  |
| 249 | 1.4.2 | **Construction - Iteration 2** |  | 20d | 2007-10-05 | 2007-11-01 | 248 | 2007-05-17 | 2007-05-18 | 1d? | -114d | 0d |  |  |  |
| 250 | 1.4.2.1 | Project Management |  | 20d | 2007-10-05 | 2007-11-01 |  |  |  |  | -114d | 0d |  |  |  |
| 251 | 1.4.2.2 | Requirements |  | 20d | 2007-10-05 | 2007-11-01 |  |  |  |  | -114d | 0d |  |  |  |
| 252 | 1.4.2.3 | Analysis and Design |  | 20d | 2007-10-05 | 2007-11-01 |  |  |  |  | -114d | 0d |  |  |  |
| 253 | 1.4.2.4 | Implementation |  | 20d | 2007-10-05 | 2007-11-01 |  |  |  |  | -114d | 0d |  |  |  |
| 254 | 1.4.2.5 | Test |  | 20d | 2007-10-05 | 2007-11-01 |  |  |  |  | -114d | 0d |  |  |  |
| 255 | 1.4.2.6 | Environment |  | 20d | 2007-10-05 | 2007-11-01 |  |  |  |  | -114d | 0d |  |  |  |
| 256 | 1.4.2.7 | Configuration and Change Management |  | 20d | 2007-10-05 | 2007-11-01 |  |  |  |  | -114d | 0d |  |  |  |
| 257 | 1.4.2.8 | C2 Complete Beta Release 1 | milestone | 0d | 2007-11-01 | 2007-11-01 | 254 |  |  |  | -114d | 0d |  |  |  |
| 258 | 1.4.3 | **Construction - Iteration 3** |  | 20d | 2007-11-02 | 2007-11-29 | 257, 249 |  |  |  | -114d | 0d |  |  |  |
| 259 | 1.4.3.1 | Project Management |  | 20d | 2007-11-02 | 2007-11-29 |  |  |  |  | -114d | 0d |  |  |  |
| 260 | 1.4.3.2 | Requirements |  | 20d | 2007-11-02 | 2007-11-29 |  |  |  |  | -114d | 0d |  |  |  |
| 261 | 1.4.3.3 | Analysis and Design |  | 20d | 2007-11-02 | 2007-11-29 |  |  |  |  | -114d | 0d |  |  |  |
| 262 | 1.4.3.4 | Implementation |  | 20d | 2007-11-02 | 2007-11-29 |  |  |  |  | -114d | 0d |  |  |  |
| 263 | 1.4.3.5 | Test |  | 20d | 2007-11-02 | 2007-11-29 |  |  |  |  | -114d | 0d |  |  |  |
| 264 | 1.4.3.6 | Environment |  | 20d | 2007-11-02 | 2007-11-29 |  |  |  |  | -114d | 0d |  |  |  |
| 265 | 1.4.3.7 | Configuration and Change Management |  | 20d | 2007-11-02 | 2007-11-29 |  |  |  |  | -114d | 0d |  |  |  |
| 266 | 1.4.3.8 | C3 Complete Beta Release 2 | milestone | 0d | 2007-11-29 | 2007-11-29 | 265 | 2007-05-17 | 2007-05-18 | 1d? | -114d | 0d |  |  |  |

| ID | WBS | Task | Duration | Start | Finish | Predecessors | Baseline start | Baseline finish | Baseline duration | Total slack | Free slack |
| --- | --- | --- | --- | --- | --- | --- | --- | --- | --- | --- | --- |
| 267 | 1.5 | **Transition Phase** | 25d? | 2007-11-30 | 2008-01-03 | 224 | 2007-05-18 | 2007-05-21 | 1d? | -114d | 0d |
| 268 | 1.5.1 | **Transition - Iteration 1** | 25d? | 2007-11-30 | 2008-01-03 |  | 2007-05-18 | 2007-05-21 | 1d? | -114d | 0d |
| 269 | 1.5.1.1 | Task | 25d | 2007-11-30 | 2008-01-03 |  |  |  |  | -114d | 0d |
| 270 | 1.5.1.2 | T1 Complete Release Candidate 1 | 1d? | 2007-11-30 | 2007-11-30 |  |  |  |  | -90d | 0d |
| 272 | 1.5.1.3 | Transition - Iteration 2 | 1d? | 2007-11-30 | 2007-11-30 |  |  |  |  | -90d | 0d |
| 273 | 1.5.1.4 | Bundle Release Available | 1d? | 2007-11-30 | 2007-11-30 |  |  |  |  | -90d | 0d |
